# Poyang Lake

Schedule from a web Gantt chart, 2025-07-23 to 2026-05-31.
Every day is a working day

## Schedule

| ID | WBS | Task | Duration | Start | Finish | Predecessors | Complete | Status |
| --- | --- | --- | --- | --- | --- | --- | --- | --- |
| 2 | 1 | **Pre-qual lot** | 140d | 2025-07-23 | 2025-12-09 |  | 60% |  |
| 3 | 1.1 | DeviceB 3FP SPW mask T/O | 8d | 2025-07-23 | 2025-07-30 |  | 100% | done |
| 4 | 1.2 | Fab Process & F/O | 30d | 2025-07-31 | 2025-08-29 | 3 | 100% | done |
| 5 | 1.3 | Device lot 补投 | 31d | 2025-08-30 | 2025-09-29 | 4 | 100% | done |
| 6 | 1.4 | Assembly | 31d | 2025-09-30 | 2025-10-30 | 5 | 50% |  |
| 7 | 1.5 | Pre-qual datasheet & AE test&RE168 | 40d | 2025-10-31 | 2025-12-09 | 6 |  | waiting |
| 8 | 2 | **Formal Qual. Lot** | 176d | 2025-11-26 | 2026-05-20 |  |  |  |
| 9 | 2.1 | **1st Formal Qual.** | 157d | 2025-11-26 | 2026-05-01 |  |  |  |
| 10 | 2.1.1 | 1st formal qual W/S | 40d | 2025-11-26 | 2026-01-04 |  |  | waiting |
| 11 | 2.1.2 | 1st formal qual assembly | 47d | 2026-01-05 | 2026-02-20 | 10 |  | waiting |
| 12 | 2.1.3 | 1st formal qual RE1000 | 70d | 2026-02-21 | 2026-05-01 | 11 |  | waiting |
| 13 | 2.2 | **2nd Formal Qual.** | 157d | 2025-12-05 | 2026-05-10 |  |  |  |
| 14 | 2.2.1 | 2nd formal qual W/S | 42d | 2025-12-05 | 2026-01-15 |  |  | waiting |
| 15 | 2.2.2 | 2nd formal qual assembly | 45d | 2026-01-16 | 2026-03-01 | 14 |  | waiting |
| 16 | 2.2.3 | 2nd formal qual RE1000 | 70d | 2026-03-02 | 2026-05-10 | 15 |  | waiting |
| 17 | 2.3 | **3rd Formal Qual.** | 162d | 2025-12-10 | 2026-05-20 |  |  |  |
| 18 | 2.3.1 | 3rd formal qual W/S | 42d | 2025-12-10 | 2026-01-20 |  |  | waiting |
| 19 | 2.3.2 | 3rd formal qual assembly | 45d | 2026-01-21 | 2026-03-06 | 18 |  | waiting |
| 20 | 2.3.3 | 3rd formal qual RE1000 | 75d | 2026-03-07 | 2026-05-20 | 19 |  | waiting |
| 21 | 3 | 技术达成 | 2d | 2026-05-30 | 2026-05-31 |  |  |  |
